# WBS_V3_MEPP

Schedule from MS Project, 2017-05-08 to 2017-08-18, costs in $, A marks actual dates.

## Calendars

- Estándar: Mon-Fri 09:00-13:00, 15:00-19:00; Sat-Sun off.
- Proyecto MEPPP: Mon-Sat 08:00-12:00, 13:00-17:00; Sun off. Exceptions (off unless hours are given): 2017-05-15 (Día Maestro), 2017-06-19 (Dia del TSU), 2017-07-04 (Suspensión de Labores).

## Resources

| Resource | Rate |
| --- | --- |
| AGS_Administrador de Proyecto | 55 |
| SSG_Analista | 46 |
| CEGR_Diseñador | 48 |
| SSG_Programador | 46 |
| CEGR_Programador | 46 |
| AGS_Tester | 38 |
| SSG_Ing V&V | 63 |
| KMJHR_Asegurador de la calidad | 41 |
| KMJHR_Control de la configuración | 38 |
| SSC_Cliente |  |

## Schedule

| ID | WBS | Task | Type | Duration | Start | Finish | Predecessors | Complete | Remaining | Total slack | Free slack | Constraint | Calendar | Resources | Work | Actual work | Cost | Actual cost |
| --- | --- | --- | --- | --- | --- | --- | --- | --- | --- | --- | --- | --- | --- | --- | --- | --- | --- | --- |
| 1 | 1 | **Plan preliminar** |  | 1.5d | 2017-05-08 09:00 A | 2017-05-09 13:00 |  | 67% | 0.5d | 0d |  |  |  |  | 36h | 24h | 1,908 | 1,272 |
| 2 | 1.1 | Generar un WBS del producto inicial |  | 1h | 2017-05-08 09:00 A | 2017-05-08 10:00 A |  | 100% |  |  |  |  |  | AGS_Administrador de Proyecto; KMJHR_Asegurador de la calidad; SSG_Ing V&V | 3h | 3h | 159 | 159 |
| 3 | 1.2 | Generar project charter |  | 1h | 2017-05-08 10:00 A | 2017-05-08 11:00 A | 2 | 100% |  |  |  |  |  | AGS_Administrador de Proyecto; KMJHR_Asegurador de la calidad; SSG_Ing V&V | 3h | 3h | 159 | 159 |
| 4 | 1.3 | Plan de proyecto preliminar |  | 2h | 2017-05-08 11:00 A | 2017-05-08 13:00 A | 3 | 100% |  |  |  |  |  | AGS_Administrador de Proyecto; KMJHR_Asegurador de la calidad; SSG_Ing V&V | 6h | 6h | 318 | 318 |
| 5 | 1.4 | Generar matriz de responsabilidades |  | 8h | 2017-05-08 15:00 A | 2017-05-09 13:00 | 4 | 50% | 4h | -22.75d | 0d |  |  | AGS_Administrador de Proyecto; KMJHR_Asegurador de la calidad; SSG_Ing V&V | 24h | 12h | 1,272 | 636 |
| 6 | 2 | **Movimiento Ecologista Preocupados por el Planeta** |  | 72.88d | 2017-05-10 08:00 A | 2017-08-18 18:00 | 1 | 27% | 53.19d | 0d |  |  |  |  | 751.2h | 157.2h | 35,529 | 7,535 |
| 7 | 2.1 | Formación del equipo de desarrollo |  | 8h | 2017-05-10 08:00 A | 2017-05-10 19:00 A | 5 | 100% |  |  |  |  |  | AGS_Administrador de Proyecto | 8h | 8h | 440 | 440 |
| 8 | 2.2 | **Especificación de requerimientos** |  | 16d | 2017-05-10 15:00 A | 2017-06-01 15:00 |  | 71% | 4.7d | 56.38d |  |  |  |  | 153.2h | 89.2h | 7,220.2 | 4,258.6 |
| 9 | 2.2.1 | **Elicitacion** |  | 6.25d | 2017-05-10 15:00 A | 2017-05-18 17:00 A |  | 100% |  |  |  |  |  |  | 34h | 34h | 1,645 | 1,645 |
| 10 | 2.2.1.1 | Generar la lista de proveedores |  | 1h | 2017-05-10 15:00 A | 2017-05-11 09:42 A | 7 | 100% |  |  |  |  |  | AGS_Administrador de Proyecto | 1h | 1h | 55 | 55 |
| 11 | 2.2.1.2 | Evaluar los proveedores de requerimientos a entrevistar |  | 4h | 2017-05-10 16:00 A | 2017-05-11 12:42 A | 10 | 100% |  |  |  |  |  | AGS_Administrador de Proyecto; SSG_Analista | 4h | 4h | 220 | 220 |
| 12 | 2.2.1.3 | Definir la estrategia de recolección de requerimientos |  | 1h | 2017-05-11 10:00 A | 2017-05-11 11:00 A | 11 | 100% |  |  |  |  |  | AGS_Administrador de Proyecto; SSG_Analista | 2h | 2h | 101 | 101 |
| 13 | 2.2.1.4 | Planificar reuniones de elicitacion de requerimientos |  | 3h | 2017-05-11 11:00 A | 2017-05-11 16:00 A | 12 | 100% |  |  |  |  |  | AGS_Administrador de Proyecto | 3h | 3h | 165 | 165 |
| 14 | 2.2.1.5 | Identificar los procesos del sistema |  | 4h | 2017-05-11 16:00 A | 2017-05-12 10:00 A | 13 | 100% |  |  |  |  |  | SSG_Analista | 4h | 4h | 184 | 184 |
| 15 | 2.2.1.6 | Identificar requerimientos funcionales |  | 2d | 2017-05-12 10:00 A | 2017-05-18 11:00 A | 14 | 100% |  |  |  |  | Proyecto MEPPP | SSG_Analista | 16h | 16h | 736 | 736 |
| 16 | 2.2.1.7 | Identificar los requerimientos no funcionales |  | 4h | 2017-05-18 11:00 A | 2017-05-18 17:00 A | 15 | 100% |  |  |  |  |  | SSG_Analista | 4h | 4h | 184 | 184 |
| 17 | 2.2.2 | **Especificación** |  | 4d | 2017-05-18 17:00 A | 2017-05-24 17:00 A |  | 100% |  |  |  |  |  |  | 40h | 40h | 1,912 | 1,912 |
| 18 | 2.2.2.1 | Describir los requerimientos |  | 1d | 2017-05-18 17:00 A | 2017-05-19 17:00 A | 16 | 100% |  |  |  |  |  | SSG_Analista | 8h | 8h | 368 | 368 |
| 19 | 2.2.2.2 | Evaluar los requerimientos |  | 1d | 2017-05-19 17:00 A | 2017-05-22 17:00 A | 18 | 100% |  |  |  |  |  | AGS_Administrador de Proyecto; SSG_Analista | 16h | 16h | 808 | 808 |
| 20 | 2.2.2.3 | SRS |  | 2d | 2017-05-22 17:00 A | 2017-05-24 17:00 A | 19 | 100% |  |  |  |  |  | SSG_Analista | 16h | 16h | 736 | 736 |
| 21 | 2.2.3 | **Gestión** |  | 4.5d | 2017-05-24 17:00 A | 2017-05-31 11:00 |  | 31% | 3.1d | 0.1d |  |  |  |  | 56h | 13.6h | 2,500 | 618.4 |
| 22 | 2.2.3.1 | Priorizar los requerimientos |  | 1d | 2017-05-24 17:00 A | 2017-05-25 17:00 A | 20 | 100% |  |  |  |  |  | SSG_Analista | 8h | 8h | 368 | 368 |
| 23 | 2.2.3.2 | Almacenar los requerimientos en un repositorio central |  | 1d | 2017-05-25 17:00 A | 2017-05-26 17:00 | 22 | 10% | 0.9d | 0.1d | 0d |  |  | KMJHR_Asegurador de la calidad; SSG_Analista | 16h | 1.6h | 696 | 69.6 |
| 24 | 2.2.3.3 | Asignar al grupo de desarrollo los requerimientos del software |  | 1d | 2017-05-26 17:00 A | 2017-05-29 17:00 | 23 | 10% | 0.9d | 0.1d | 0d |  |  | SSG_Analista | 8h | 0.8h | 368 | 36.8 |
| 25 | 2.2.3.4 | Administrar los cambios en los requerimientos |  | 4h | 2017-05-29 17:00 A | 2017-05-30 11:00 | 24 | 20% | 3.2h | 0.1d | 0d |  |  | AGS_Administrador de Proyecto; KMJHR_Control de la configuración | 8h | 1.6h | 372 | 74.4 |
| 26 | 2.2.3.5 | Administrar la trazabilidad de los requerimientos |  | 1d | 2017-05-30 11:00 A | 2017-05-31 11:00 | 25 | 10% | 0.9d | 0.1d | 0d |  |  | KMJHR_Asegurador de la calidad; SSG_Analista | 16h | 1.6h | 696 | 69.6 |
| 27 | 2.2.4 | Calificar V&V de requerimientos |  | 1d | 2017-05-31 11:00 A | 2017-06-01 11:00 | 26 | 10% | 0.9d | 56.62d |  |  |  | KMJHR_Asegurador de la calidad; SSG_Ing V&V; SSG_Analista | 23.2h | 1.6h | 1,163.2 | 83.2 |
| 28 | 2.2.5 | Hito de especificación de requerimientos | milestone | 0d | 2017-06-01 15:00 | 2017-06-01 15:00 |  |  |  | -39.75d | 0d | finish no earlier than 2017-06-01 15:00 |  | AGS_Administrador de Proyecto |  |  |  |  |

| ID | WBS | Task | Type | Duration | Start | Finish | Predecessors | Complete | Remaining | Total slack | Free slack | Constraint | Resources | Work | Actual work | Cost | Actual cost |
| --- | --- | --- | --- | --- | --- | --- | --- | --- | --- | --- | --- | --- | --- | --- | --- | --- | --- |
| 29 | 2.3 | **Planificación** |  | 17.75d | 2017-06-01 15:00 A | 2017-06-27 11:00 | 28 | 23% | 13.7d | -0.25d | 0d |  |  | 274.4h | 35.6h | 13,269.2 | 1,665.2 |
| 30 | 2.3.1 | Definición del ciclo de vida |  | 4h | 2017-06-01 15:00 A | 2017-06-01 19:00 A | 27 | 100% |  |  |  |  | AGS_Administrador de Proyecto; KMJHR_Asegurador de la calidad; SSG_Analista; SSG_Ing V&V | 4h | 4h | 220 | 220 |
| 31 | 2.3.2 | Políticas del proyecto |  | 1d | 2017-06-02 09:00 A | 2017-06-02 19:00 | 30 | 5% | 0.95d | -39.25d | 0d |  | AGS_Administrador de Proyecto; KMJHR_Asegurador de la calidad | 16h | 0.8h | 768 | 38.4 |
| 32 | 2.3.3 | Actualizar plan de proyecto |  | 2d | 2017-06-05 09:00 | 2017-06-06 19:00 | 31 |  |  | -39.25d | 0d |  | AGS_Administrador de Proyecto; KMJHR_Control de la configuración; SSG_Analista | 48h |  | 2,224 |  |
| 33 | 2.3.4 | **Estimación** |  | 4d | 2017-06-07 09:00 A | 2017-06-12 19:00 |  | 5% | 3.8d | 0d |  |  |  | 56h | 2.8h | 2,792 | 139.6 |
| 34 | 2.3.4.1 | Actualizar WBS/ calendario |  | 1d | 2017-06-07 09:00 A | 2017-06-07 19:00 | 32 | 15% | 0.85d | -42.25d | 0d | start no earlier than 2017-06-01 08:00 | AGS_Administrador de Proyecto; SSG_Analista | 16h | 2.4h | 808 | 121.2 |
| 35 | 2.3.4.2 | Diccionario del WBS |  | 2d | 2017-06-08 09:00 | 2017-06-09 19:00 | 34 |  |  | -42.25d | 0d |  | SSG_Analista; AGS_Administrador de Proyecto | 32h |  | 1,616 |  |
| 36 | 2.3.4.3 | Costos |  | 1d | 2017-06-12 09:00 A | 2017-06-12 19:00 | 35 | 5% | 0.95d | -43.25d | 0d |  | SSG_Analista | 8h | 0.4h | 368 | 18.4 |
| 37 | 2.3.5 | **Riesgos** |  | 8d | 2017-06-13 09:00 A | 2017-06-22 19:00 |  | 39% | 4.9d | -4d | 0d |  |  | 96h | 24.8h | 4,704 | 1,140.8 |
| 38 | 2.3.5.1 | Identificación de riesgos |  | 3d | 2017-06-13 09:00 A | 2017-06-15 19:00 A | 36 | 100% |  |  |  |  | SSG_Analista; AGS_Administrador de Proyecto | 24h | 24h | 1,104 | 1,104 |
| 39 | 2.3.5.2 | Asignación de prioridades |  | 1d | 2017-06-16 09:00 A | 2017-06-16 19:00 | 38 | 10% | 0.9d | -51.25d | 0d |  | SSG_Analista | 8h | 0.8h | 368 | 36.8 |
| 40 | 2.3.5.3 | Plan de mitigación y contingencia |  | 4d | 2017-06-19 09:00 | 2017-06-22 19:00 | 39 |  |  | -51.25d | 0d |  | AGS_Administrador de Proyecto; SSG_Analista | 64h |  | 3,232 |  |
| 41 | 2.3.6 | **Aseguramiento de la calidad** |  | 2.25d | 2017-06-23 09:00 A | 2017-06-27 11:00 |  | 9% | 2.05d | -0.25d | 0d |  |  | 54.4h | 3.2h | 2,561.2 | 126.4 |
| 42 | 2.3.6.1 | Plan de gestión de la configuración |  | 2d | 2017-06-23 09:00 A | 2017-06-26 19:00 | 40 | 10% | 1.8d | -53.5d | 0d |  | KMJHR_Asegurador de la calidad; KMJHR_Control de la configuración; SSG_Ing V&V | 46.4h | 3.2h | 2,171.2 | 126.4 |
| 43 | 2.3.6.2 | Junta de arranque de construcción |  | 2h | 2017-06-27 09:00 | 2017-06-27 11:00 | 42 |  |  | -53.5d | 0d |  | AGS_Administrador de Proyecto; CEGR_Diseñador; CEGR_Programador; SSG_Programador | 8h |  | 390 |  |
| 44 | 2.3.7 | Hito de Planificación | milestone | 0d | 2017-06-27 08:00 | 2017-06-27 08:00 |  |  |  | -53.25d | 0d | start no earlier than 2017-06-27 08:00 | AGS_Administrador de Proyecto |  |  |  |  |
| 45 | 2.4 | **Diseño preliminar** |  | 16.75d | 2017-06-27 11:00 A | 2017-07-20 08:00 | 29 | 27% | 12.31d | -8.25d | 0d |  |  | 95.6h | 24.4h | 4,701.6 | 1,171.2 |
| 46 | 2.4.1 | Definición de la arquitectura |  | 2d | 2017-06-27 11:00 A | 2017-06-29 11:00 A | 43 | 100% |  |  |  |  | CEGR_Diseñador | 16h | 16h | 768 | 768 |
| 47 | 2.4.2 | **Diagramas UML** |  | 5.5d | 2017-06-29 11:00 A | 2017-07-06 17:00 |  | 9% | 5d | -2d | 0d |  |  | 44h | 4h | 2,112 | 192 |
| 48 | 2.4.2.1 | Diagramas de casos de uso |  | 2d | 2017-06-29 11:00 | 2017-07-03 11:00 | 46 |  |  | -55.5d | 0d |  | CEGR_Diseñador | 16h |  | 768 |  |
| 49 | 2.4.2.2 | Diagramas de secuencia |  | 1d | 2017-07-03 11:00 | 2017-07-04 11:00 | 48 |  |  | -55.5d | 0d |  | CEGR_Diseñador | 8h |  | 384 |  |
| 50 | 2.4.2.3 | Diagrama de clases |  | 4h | 2017-07-04 11:00 A | 2017-07-04 17:00 A | 49 | 100% |  |  |  |  | CEGR_Diseñador | 4h | 4h | 192 | 192 |
| 51 | 2.4.2.4 | Diagrama de componentes |  | 1d | 2017-07-04 17:00 | 2017-07-05 17:00 | 50 |  |  | -58d | 0d |  | CEGR_Diseñador | 8h |  | 384 |  |
| 52 | 2.4.2.5 | Diagrama de despliegue |  | 1d | 2017-07-05 17:00 | 2017-07-06 17:00 | 51 |  |  | -58d | 0d |  | CEGR_Diseñador | 8h |  | 384 |  |
| 53 | 2.4.3 | Mapa de navegación |  | 4h | 2017-07-06 17:00 A | 2017-07-07 11:00 A | 52 | 100% |  |  |  |  | CEGR_Diseñador | 4h | 4h | 192 | 192 |
| 54 | 2.4.4 | Maquetación/bocetos |  | 4h | 2017-07-07 11:00 A | 2017-07-07 17:00 | 53 | 10% | 3.6h | -62d | 0d |  | CEGR_Diseñador; SSG_Analista | 7.6h | 0.4h | 357.6 | 19.2 |

| ID | WBS | Task | Type | Duration | Start | Finish | Predecessors | Total slack | Free slack | Constraint | Resources | Work | Cost |
| --- | --- | --- | --- | --- | --- | --- | --- | --- | --- | --- | --- | --- | --- |
| 55 | 2.4.5 | **Base de datos** |  | 2d | 2017-07-07 17:00 | 2017-07-11 17:00 |  | -62d | 0d |  |  | 16h | 768 |
| 56 | 2.4.5.1 | Diagrama E-R |  | 4h | 2017-07-07 17:00 | 2017-07-10 11:00 | 54 | -62d | 0d |  | CEGR_Diseñador | 4h | 192 |
| 57 | 2.4.5.2 | Diagrama relacional |  | 4h | 2017-07-10 11:00 | 2017-07-10 17:00 | 56 | -62d | 0d |  | CEGR_Diseñador | 4h | 192 |
| 58 | 2.4.5.3 | Diccionario de datos |  | 1d | 2017-07-10 17:00 | 2017-07-11 17:00 | 57 | -62d | 0d |  | CEGR_Diseñador | 8h | 384 |
| 59 | 2.4.6 | Integración de V&V |  | 1d | 2017-07-11 17:00 | 2017-07-12 17:00 | 58 | -62d | 0d |  | SSG_Ing V&V | 8h | 504 |
| 60 | 2.4.7 | Hito de Diseño preliminar | milestone | 0d | 2017-07-20 08:00 | 2017-07-20 08:00 |  | -67.25d | 0d | start no earlier than 2017-07-20 08:00 | AGS_Administrador de Proyecto |  |  |
| 61 | 2.5 | **Diseño detallado** |  | 0.88d | 2017-07-20 08:00 | 2017-07-20 18:00 | 45 | -67.25d | 0d |  |  | 13h | 608 |
| 62 | 2.5.1 | Refinamiento del diseño |  | 3h | 2017-07-20 09:00 | 2017-07-20 12:00 | 59 | -67.25d | 0d |  | CEGR_Diseñador; KMJHR_Asegurador de la calidad; SSG_Ing V&V | 9h | 456 |
| 63 | 2.5.2 | Pruebas unitarias o unidad |  | 4h | 2017-07-20 12:00 | 2017-07-20 18:00 | 62 | -67.25d | 0d | finish no earlier than 2017-06-27 15:00 | AGS_Tester | 4h | 152 |
| 64 | 2.5.3 | Hito de Diseño detallado | milestone | 0d | 2017-07-20 08:00 | 2017-07-20 08:00 |  | -66.38d | 0d | start no earlier than 2017-07-20 08:00 | AGS_Administrador de Proyecto |  |  |
| 65 | 2.6 | **Codificación** |  | 13.38d | 2017-07-20 18:00 | 2017-08-09 11:00 | 61 | -67.38d | 0d |  |  | 114h | 5,244 |
| 66 | 2.6.1 | Codificación de la base de datos |  | 1d | 2017-07-20 18:00 | 2017-07-21 18:00 | 63 | -67.25d | 0d |  | CEGR_Programador; SSG_Programador | 16h | 736 |
| 67 | 2.6.2 | **Módulo de servicios** |  | 2.25d | 2017-07-21 18:00 | 2017-07-26 10:00 |  | -67.25d | 0d |  |  | 18h | 828 |
| 68 | 2.6.2.1 | Clases de servicio |  | 1d | 2017-07-21 18:00 | 2017-07-24 18:00 | 66 | -67.25d | 0d |  | CEGR_Programador | 8h | 368 |
| 69 | 2.6.2.2 | **Controlador** |  | 0.88d | 2017-07-24 18:00 | 2017-07-25 17:00 |  | -67.25d | 0d |  |  | 7h | 322 |
| 70 | 2.6.2.2.1 | Alta |  | 2h | 2017-07-24 18:00 | 2017-07-25 10:00 | 68 | -67.25d | 0d |  | CEGR_Programador | 2h | 92 |
| 71 | 2.6.2.2.2 | Baja |  | 2h | 2017-07-25 10:00 | 2017-07-25 12:00 | 70 | -67.25d | 0d |  | CEGR_Programador | 2h | 92 |
| 72 | 2.6.2.2.3 | Consulta |  | 1h | 2017-07-25 12:00 | 2017-07-25 13:00 | 71 | -67.25d | 0d |  | CEGR_Programador | 1h | 46 |
| 73 | 2.6.2.2.4 | Modificación |  | 2h | 2017-07-25 15:00 | 2017-07-25 17:00 | 72 | -67.25d | 0d |  | CEGR_Programador | 2h | 92 |
| 74 | 2.6.2.3 | Vista/interfaz |  | 2h | 2017-07-25 17:00 | 2017-07-25 19:00 | 73 | -67.25d | 0d |  | CEGR_Programador | 2h | 92 |
| 75 | 2.6.2.4 | Reportes |  | 1h | 2017-07-26 09:00 | 2017-07-26 10:00 | 74 | -67.25d | 0d |  | CEGR_Programador | 1h | 46 |
| 76 | 2.6.3 | **Módulo de usuarios** |  | 2.25d | 2017-07-26 10:00 | 2017-07-28 12:00 |  | -67.25d | 0d |  |  | 18h | 828 |
| 77 | 2.6.3.1 | Clases de usuarios |  | 1d | 2017-07-26 10:00 | 2017-07-27 10:00 | 75 | -67.25d | 0d |  | SSG_Programador | 8h | 368 |
| 78 | 2.6.3.2 | **Controlador** |  | 0.88d | 2017-07-27 10:00 | 2017-07-27 19:00 |  | -67.25d | 0d |  |  | 7h | 322 |
| 79 | 2.6.3.2.1 | Alta |  | 2h | 2017-07-27 10:00 | 2017-07-27 12:00 | 77 | -67.25d | 0d |  | SSG_Programador | 2h | 92 |
| 80 | 2.6.3.2.2 | Baja |  | 2h | 2017-07-27 12:00 | 2017-07-27 16:00 | 79 | -67.25d | 0d |  | SSG_Programador | 2h | 92 |
| 81 | 2.6.3.2.3 | Consulta |  | 1h | 2017-07-27 16:00 | 2017-07-27 17:00 | 80 | -67.25d | 0d |  | SSG_Programador | 1h | 46 |
| 82 | 2.6.3.2.4 | Modificación |  | 2h | 2017-07-27 17:00 | 2017-07-27 19:00 | 81 | -67.25d | 0d |  | SSG_Programador | 2h | 92 |
| 83 | 2.6.3.3 | Vista/interfaz |  | 2h | 2017-07-28 09:00 | 2017-07-28 11:00 | 82 | -67.25d | 0d |  | SSG_Programador | 2h | 92 |
| 84 | 2.6.3.4 | Reportes |  | 1h | 2017-07-28 11:00 | 2017-07-28 12:00 | 83 | -67.25d | 0d |  | SSG_Programador | 1h | 46 |

| ID | WBS | Task | Duration | Start | Finish | Predecessors | Total slack | Free slack | Constraint | Resources | Work | Cost |
| --- | --- | --- | --- | --- | --- | --- | --- | --- | --- | --- | --- | --- |
| 85 | 2.6.4 | **Módulo de comentarios** | 2.25d | 2017-07-28 12:00 | 2017-08-01 16:00 |  | -67.25d | 0d |  |  | 18h | 828 |
| 86 | 2.6.4.1 | Clases de comentarios | 1d | 2017-07-28 12:00 | 2017-07-31 12:00 | 84 | -67.25d | 0d |  | CEGR_Programador | 8h | 368 |
| 87 | 2.6.4.2 | **Controlador** | 0.88d | 2017-07-31 12:00 | 2017-08-01 11:00 |  | -67.25d | 0d |  |  | 7h | 322 |
| 88 | 2.6.4.2.1 | Alta | 2h | 2017-07-31 12:00 | 2017-07-31 16:00 | 86 | -67.25d | 0d |  | CEGR_Programador | 2h | 92 |
| 89 | 2.6.4.2.2 | Baja | 2h | 2017-07-31 16:00 | 2017-07-31 18:00 | 88 | -67.25d | 0d |  | CEGR_Programador | 2h | 92 |
| 90 | 2.6.4.2.3 | Cosulta | 1h | 2017-07-31 18:00 | 2017-07-31 19:00 | 89 | -67.25d | 0d |  | CEGR_Programador | 1h | 46 |
| 91 | 2.6.4.2.4 | Modificación | 2h | 2017-08-01 09:00 | 2017-08-01 11:00 | 90 | -67.25d | 0d |  | CEGR_Programador | 2h | 92 |
| 92 | 2.6.4.3 | Vista/interfaz | 2h | 2017-08-01 11:00 | 2017-08-01 13:00 | 91 | -67.25d | 0d |  | CEGR_Programador | 2h | 92 |
| 93 | 2.6.4.4 | Reporte | 1h | 2017-08-01 15:00 | 2017-08-01 16:00 | 92 | -67.25d | 0d |  | CEGR_Programador | 1h | 46 |
| 94 | 2.6.5 | **Mòdulo de campañas** | 2.25d | 2017-08-01 16:00 | 2017-08-03 18:00 |  | -67.25d | 0d |  |  | 18h | 828 |
| 95 | 2.6.5.1 | Clases de campañas | 1d | 2017-08-01 16:00 | 2017-08-02 16:00 | 93 | -67.25d | 0d |  | SSG_Programador | 8h | 368 |
| 96 | 2.6.5.2 | **Controlador** | 0.88d | 2017-08-02 16:00 | 2017-08-03 13:00 |  | -67.25d | 0d |  |  | 7h | 322 |
| 97 | 2.6.5.2.1 | Alta | 2h | 2017-08-02 16:00 | 2017-08-02 18:00 | 95 | -67.25d | 0d |  | SSG_Programador | 2h | 92 |
| 98 | 2.6.5.2.2 | Baja | 2h | 2017-08-02 18:00 | 2017-08-03 10:00 | 97 | -67.25d | 0d |  | SSG_Programador | 2h | 92 |
| 99 | 2.6.5.2.3 | Consultas | 1h | 2017-08-03 10:00 | 2017-08-03 11:00 | 98 | -67.25d | 0d |  | SSG_Programador | 1h | 46 |
| 100 | 2.6.5.2.4 | Modificaciòn | 2h | 2017-08-03 11:00 | 2017-08-03 13:00 | 99 | -67.25d | 0d |  | SSG_Programador | 2h | 92 |
| 101 | 2.6.5.3 | Vista/interfaz | 2h | 2017-08-03 15:00 | 2017-08-03 17:00 | 100 | -67.25d | 0d |  | SSG_Programador | 2h | 92 |
| 102 | 2.6.5.4 | Reporte | 1h | 2017-08-03 17:00 | 2017-08-03 18:00 | 101 | -67.25d | 0d |  | SSG_Programador | 1h | 46 |
| 103 | 2.6.6 | **Mòdulo de "Quienes Somos"** | 0.5d | 2017-08-04 09:00 | 2017-08-04 15:00 |  | -67.38d | 0d |  |  | 4h | 184 |
| 104 | 2.6.6.1 | Vista/interface | 4h | 2017-08-04 09:00 | 2017-08-04 15:00 | 102 | -67.38d | 0d | finish no earlier than 2017-08-04 15:00 | CEGR_Programador | 4h | 184 |
| 105 | 2.6.7 | **Módulo de invernadero** | 0.75d | 2017-08-04 15:00 | 2017-08-07 11:00 |  | -67.38d | 0d |  |  | 6h | 276 |
| 106 | 2.6.7.1 | Clases de campañas | 1h | 2017-08-04 15:00 | 2017-08-04 16:00 | 104 | -67.38d | 0d |  | CEGR_Programador | 1h | 46 |
| 107 | 2.6.7.2 | Controlador | 2h | 2017-08-04 16:00 | 2017-08-04 18:00 | 106 | -67.38d | 0d |  | CEGR_Programador | 2h | 92 |
| 108 | 2.6.7.3 | Vista/interfaz | 2h | 2017-08-04 18:00 | 2017-08-07 10:00 | 107 | -67.38d | 0d |  | CEGR_Programador | 2h | 92 |
| 109 | 2.6.7.4 | Reporte | 1h | 2017-08-07 10:00 | 2017-08-07 11:00 | 108 | -67.38d | 0d |  | CEGR_Programador | 1h | 46 |

| ID | WBS | Task | Type | Duration | Start | Finish | Predecessors | Total slack | Free slack | Resources | Work | Cost |
| --- | --- | --- | --- | --- | --- | --- | --- | --- | --- | --- | --- | --- |
| 110 | 2.6.8 | **Mòdulo de "Preguntas Frecuentes"** |  | 0.5d | 2017-08-07 11:00 | 2017-08-07 17:00 |  | -67.38d | 0d |  | 4h | 184 |
| 111 | 2.6.8.1 | Vista/interfaz |  | 4h | 2017-08-07 11:00 | 2017-08-07 17:00 | 109 | -67.38d | 0d | SSG_Programador | 4h | 184 |
| 112 | 2.6.9 | **Módulo de "Socios"** |  | 0.75d | 2017-08-07 17:00 | 2017-08-08 13:00 |  | -67.38d | 0d |  | 6h | 276 |
| 113 | 2.6.9.1 | Clases de "Socios" |  | 1h | 2017-08-07 17:00 | 2017-08-07 18:00 | 111 | -67.38d | 0d | SSG_Programador | 1h | 46 |
| 114 | 2.6.9.2 | Controlador |  | 2h | 2017-08-07 18:00 | 2017-08-08 10:00 | 113 | -67.38d | 0d | SSG_Programador | 2h | 92 |
| 115 | 2.6.9.3 | Vista/interfaz |  | 2h | 2017-08-08 10:00 | 2017-08-08 12:00 | 114 | -67.38d | 0d | SSG_Programador | 2h | 92 |
| 116 | 2.6.9.4 | Reporte |  | 1h | 2017-08-08 12:00 | 2017-08-08 13:00 | 115 | -67.38d | 0d | SSG_Programador | 1h | 46 |
| 117 | 2.6.10 | **Módulo de Donaciones** |  | 0.75d | 2017-08-08 15:00 | 2017-08-09 11:00 |  | -67.38d | 0d |  | 6h | 276 |
| 118 | 2.6.10.1 | Clases de Donaciones |  | 1h | 2017-08-08 15:00 | 2017-08-08 16:00 | 116 | -67.38d | 0d | CEGR_Programador | 1h | 46 |
| 119 | 2.6.10.2 | Controlador |  | 2h | 2017-08-08 16:00 | 2017-08-08 18:00 | 118 | -67.38d | 0d | CEGR_Programador | 2h | 92 |
| 120 | 2.6.10.3 | Vista/interfaz |  | 2h | 2017-08-08 18:00 | 2017-08-09 10:00 | 119 | -67.38d | 0d | CEGR_Programador | 2h | 92 |
| 121 | 2.6.10.4 | Reporte |  | 1h | 2017-08-09 10:00 | 2017-08-09 11:00 | 120 | -67.38d | 0d | CEGR_Programador | 1h | 46 |
| 122 | 2.6.11 | Hito de Codificación | milestone | 0d | 2017-08-09 11:00 | 2017-08-09 11:00 | 121 | -67.38d | 0d | AGS_Administrador de Proyecto |  |  |
| 123 | 2.7 | **Pruebas** |  | 3.88d | 2017-08-09 11:00 | 2017-08-15 10:00 | 65 | -67.38d | 0d |  | 31h | 1,178 |
| 124 | 2.7.1 | **Caja Blanca** |  | 3.88d | 2017-08-09 11:00 | 2017-08-15 10:00 |  | -67.38d | 0d |  | 31h | 1,178 |
| 125 | 2.7.1.1 | **Módulo de servicios** |  | 0.38d | 2017-08-09 11:00 | 2017-08-09 16:00 |  | -67.38d | 0d |  | 3h | 114 |
| 126 | 2.7.1.1.1 | Pruebas unitarias |  | 2h | 2017-08-09 11:00 | 2017-08-09 13:00 | 122 | -67.38d | 0d | AGS_Tester | 2h | 76 |
| 127 | 2.7.1.1.2 | Pruebas de módulo |  | 1h | 2017-08-09 15:00 | 2017-08-09 16:00 | 126 | -67.38d | 0d | AGS_Tester | 1h | 38 |
| 128 | 2.7.1.2 | **Módulo de usuarios** |  | 0.38d | 2017-08-09 16:00 | 2017-08-09 19:00 |  | -67.38d | 0d |  | 3h | 114 |
| 129 | 2.7.1.2.1 | Pruebas unitarias |  | 2h | 2017-08-09 16:00 | 2017-08-09 18:00 | 127 | -67.38d | 0d | AGS_Tester | 2h | 76 |
| 130 | 2.7.1.2.2 | Pruebas de módulo |  | 1h | 2017-08-09 18:00 | 2017-08-09 19:00 | 129 | -67.38d | 0d | AGS_Tester | 1h | 38 |
| 131 | 2.7.1.3 | **Módulo de comentarios** |  | 0.38d | 2017-08-10 09:00 | 2017-08-10 12:00 |  | -67.38d | 0d |  | 3h | 114 |
| 132 | 2.7.1.3.1 | Pruebas unitarias |  | 2h | 2017-08-10 09:00 | 2017-08-10 11:00 | 130 | -67.38d | 0d | AGS_Tester | 2h | 76 |
| 133 | 2.7.1.3.2 | Pruebas de módulo |  | 1h | 2017-08-10 11:00 | 2017-08-10 12:00 | 132 | -67.38d | 0d | AGS_Tester | 1h | 38 |

| ID | WBS | Task | Duration | Start | Finish | Predecessors | Total slack | Free slack | Resources | Work | Cost |
| --- | --- | --- | --- | --- | --- | --- | --- | --- | --- | --- | --- |
| 134 | 2.7.1.4 | **Módulo de campañas** | 0.38d | 2017-08-10 12:00 | 2017-08-10 17:00 |  | -67.38d | 0d |  | 3h | 114 |
| 135 | 2.7.1.4.1 | Pruebas unitarias | 2h | 2017-08-10 12:00 | 2017-08-10 16:00 | 133 | -67.38d | 0d | AGS_Tester | 2h | 76 |
| 136 | 2.7.1.4.2 | Pruebas de módulo | 1h | 2017-08-10 16:00 | 2017-08-10 17:00 | 135 | -67.38d | 0d | AGS_Tester | 1h | 38 |
| 137 | 2.7.1.5 | **Módulo de Quienes somos** | 0.38d | 2017-08-10 17:00 | 2017-08-11 10:00 |  | -67.38d | 0d |  | 3h | 114 |
| 138 | 2.7.1.5.1 | Pruebas unitarias | 2h | 2017-08-10 17:00 | 2017-08-10 19:00 | 136 | -67.38d | 0d | AGS_Tester | 2h | 76 |
| 139 | 2.7.1.5.2 | Pruebas de módulo | 1h | 2017-08-11 09:00 | 2017-08-11 10:00 | 138 | -67.38d | 0d | AGS_Tester | 1h | 38 |
| 140 | 2.7.1.6 | **Módulo de invernadero** | 0.38d | 2017-08-11 10:00 | 2017-08-11 13:00 |  | -67.38d | 0d |  | 3h | 114 |
| 141 | 2.7.1.6.1 | Pruebas unitarias | 2h | 2017-08-11 10:00 | 2017-08-11 12:00 | 139 | -67.38d | 0d | AGS_Tester | 2h | 76 |
| 142 | 2.7.1.6.2 | Pruebas de módulo | 1h | 2017-08-11 12:00 | 2017-08-11 13:00 | 141 | -67.38d | 0d | AGS_Tester | 1h | 38 |
| 143 | 2.7.1.7 | **Módulo de preguntas frecuentes** | 0.38d | 2017-08-11 15:00 | 2017-08-11 18:00 |  | -67.38d | 0d |  | 3h | 114 |
| 144 | 2.7.1.7.1 | Pruebas unitarias | 2h | 2017-08-11 15:00 | 2017-08-11 17:00 | 142 | -67.38d | 0d | AGS_Tester | 2h | 76 |
| 145 | 2.7.1.7.2 | Pruebas de módulo | 1h | 2017-08-11 17:00 | 2017-08-11 18:00 | 144 | -67.38d | 0d | AGS_Tester | 1h | 38 |
| 146 | 2.7.1.8 | **Módulo de Socios** | 0.38d | 2017-08-11 18:00 | 2017-08-14 11:00 |  | -67.38d | 0d |  | 3h | 114 |
| 147 | 2.7.1.8.1 | Pruebas unitarias | 2h | 2017-08-11 18:00 | 2017-08-14 10:00 | 145 | -67.38d | 0d | AGS_Tester | 2h | 76 |
| 148 | 2.7.1.8.2 | Pruebas de módulo | 1h | 2017-08-14 10:00 | 2017-08-14 11:00 | 147 | -67.38d | 0d | AGS_Tester | 1h | 38 |
| 149 | 2.7.1.9 | **Módulo de donaciones** | 0.38d | 2017-08-14 11:00 | 2017-08-14 16:00 |  | -67.38d | 0d |  | 3h | 114 |
| 150 | 2.7.1.9.1 | Pruebas unitarias | 2h | 2017-08-14 11:00 | 2017-08-14 13:00 | 148 | -67.38d | 0d | AGS_Tester | 2h | 76 |
| 151 | 2.7.1.9.2 | Pruebas de módulo | 1h | 2017-08-14 15:00 | 2017-08-14 16:00 | 150 | -67.38d | 0d | AGS_Tester | 1h | 38 |
| 152 | 2.7.1.10 | Prueba de sistema | 2h | 2017-08-14 16:00 | 2017-08-14 18:00 | 151 | -67.38d | 0d | AGS_Tester | 2h | 76 |
| 153 | 2.7.1.11 | Prueba de integración | 2h | 2017-08-14 18:00 | 2017-08-15 10:00 | 152 | -67.38d | 0d | AGS_Tester | 2h | 76 |
| 154 | 2.8 | **Integración** | 0.38d | 2017-08-15 10:00 | 2017-08-15 13:00 | 123 | -67.38d | 0d |  | 6h | 279 |
| 155 | 2.8.1 | Pruebas de integración | 3h | 2017-08-15 10:00 | 2017-08-15 13:00 | 153 | -67.38d | 0d | AGS_Tester; AGS_Administrador de Proyecto | 6h | 279 |
| 156 | 2.9 | **Implementación** | 0.88d | 2017-08-15 15:00 | 2017-08-16 12:00 | 154 | -67.38d | 0d |  | 30h | 1,363 |
| 157 | 2.9.1 | Lista de hosting | 2h | 2017-08-15 15:00 | 2017-08-15 17:00 | 155 | -67.38d | 0d | CEGR_Programador; SSG_Programador; AGS_Tester | 6h | 260 |
| 158 | 2.9.2 | Evaluación de hosting | 1h | 2017-08-15 17:00 | 2017-08-15 18:00 | 157 | -67.38d | 0d | CEGR_Programador; SSG_Programador; AGS_Administrador de Proyecto; AGS_Tester | 4h | 185 |
| 159 | 2.9.3 | Montar el sitio en el hosting | 2h | 2017-08-15 18:00 | 2017-08-16 10:00 | 158 | -67.38d | 0d | CEGR_Programador; SSG_Programador; AGS_Tester; CEGR_Diseñador; SSG_Analista | 10h | 448 |
| 160 | 2.9.4 | Pruebas de sistema | 2h | 2017-08-16 10:00 | 2017-08-16 12:00 | 159 | -67.38d | 0d | AGS_Tester; AGS_Administrador de Proyecto; KMJHR_Asegurador de la calidad; KMJHR_Control de la configuración; SSG_Ing V&V | 10h | 470 |

| ID | WBS | Task | Type | Duration | Start | Finish | Predecessors | Complete | Remaining | Total slack | Constraint | Resources | Work | Cost |
| --- | --- | --- | --- | --- | --- | --- | --- | --- | --- | --- | --- | --- | --- | --- |
| 161 | 2.10 | **Cierre de proyecto** |  | 69.88d | 2017-05-13 09:00 A | 2017-08-18 18:00 | 156 |  | 69.88d | 0d |  |  | 26h | 1,226 |
| 162 | 2.10.1 | Carta de aceptación |  | 2h | 2017-08-16 12:00 | 2017-08-16 16:00 | 160 |  |  | 0d |  | AGS_Administrador de Proyecto; SSG_Ing V&V; SSC_Cliente | 6h | 236 |
| 163 | 2.10.2 | Acta de cierre de proyecto |  | 2h | 2017-08-16 16:00 | 2017-08-16 18:00 | 162 |  |  | 0d |  | AGS_Administrador de Proyecto; SSC_Cliente | 4h | 110 |
| 164 | 2.10.3 | Evaluación de desempeño |  | 4h | 2017-08-16 18:00 | 2017-08-17 12:00 | 163 |  |  | 0d |  | AGS_Administrador de Proyecto | 4h | 220 |
| 165 | 2.10.4 | Junta de lecciones aprendidas |  | 6h | 2017-08-17 12:00 | 2017-08-18 10:00 | 164 |  |  | 0d |  | AGS_Administrador de Proyecto | 6h | 330 |
| 166 | 2.10.5 | Revisión de adherencias |  | 4h | 2017-08-18 10:00 | 2017-08-18 16:00 | 165 |  |  | 0d |  | AGS_Administrador de Proyecto | 4h | 220 |
| 167 | 2.10.6 | Liberación de recursos |  | 1h | 2017-08-18 16:00 | 2017-08-18 17:00 | 166 |  |  | 0d |  | AGS_Administrador de Proyecto | 1h | 55 |
| 168 | 2.10.7 | Informe final(Cierre) |  | 1h | 2017-08-18 17:00 | 2017-08-18 18:00 | 167 |  |  | 0d |  | AGS_Administrador de Proyecto | 1h | 55 |
| 171 | 2.10.8 | **Revisiones** |  | 67.38d | 2017-05-13 09:00 A | 2017-08-16 12:00 |  |  | 67.38d | 2.5d |  |  |  |  |
| 172 | 2.10.8.1 | Revisiones 1 | milestone | 0d | 2017-05-13 09:00 A | 2017-05-13 09:00 A |  | 100% |  |  | start no earlier than 2017-05-13 09:00 | SSG_Ing V&V; KMJHR_Asegurador de la calidad; KMJHR_Control de la configuración |  |  |
| 173 | 2.10.8.2 | Revisiones 2 | milestone | 0d | 2017-05-20 09:00 A | 2017-05-20 09:00 A |  | 100% |  |  | start no earlier than 2017-05-20 09:00 | SSG_Ing V&V; KMJHR_Asegurador de la calidad; KMJHR_Control de la configuración |  |  |
| 174 | 2.10.8.3 | Revisiones 3 | milestone | 0d | 2017-08-16 12:00 | 2017-08-16 12:00 |  |  |  | 2.5d | start no earlier than 2017-05-27 09:00 | SSG_Ing V&V; KMJHR_Asegurador de la calidad; KMJHR_Control de la configuración |  |  |
| 175 | 2.10.8.4 | Revisiones 4 | milestone | 0d | 2017-08-16 12:00 | 2017-08-16 12:00 |  |  |  | 2.5d | start no earlier than 2017-06-03 09:00 | SSG_Ing V&V; KMJHR_Asegurador de la calidad; KMJHR_Control de la configuración |  |  |
| 176 | 2.10.8.5 | Revisiones 5 | milestone | 0d | 2017-08-16 12:00 | 2017-08-16 12:00 |  |  |  | 2.5d | start no earlier than 2017-06-10 09:00 | SSG_Ing V&V; KMJHR_Asegurador de la calidad; KMJHR_Control de la configuración |  |  |
| 177 | 2.10.8.6 | Revisiones 6 | milestone | 0d | 2017-08-16 12:00 | 2017-08-16 12:00 |  |  |  | 2.5d | start no earlier than 2017-06-17 09:00 | SSG_Ing V&V; KMJHR_Asegurador de la calidad; KMJHR_Control de la configuración |  |  |
| 178 | 2.10.8.7 | Revisiones 7 | milestone | 0d | 2017-08-16 12:00 | 2017-08-16 12:00 |  |  |  | 2.5d | start no earlier than 2017-06-24 09:00 | SSG_Ing V&V; KMJHR_Asegurador de la calidad; KMJHR_Control de la configuración |  |  |
| 179 | 2.10.8.8 | Revisiones 8 | milestone | 0d | 2017-08-16 12:00 | 2017-08-16 12:00 |  |  |  | 2.5d | start no earlier than 2017-07-01 09:00 | SSG_Ing V&V; KMJHR_Asegurador de la calidad; KMJHR_Control de la configuración |  |  |
| 180 | 2.10.8.9 | Revisiones 9 | milestone | 0d | 2017-08-16 12:00 | 2017-08-16 12:00 |  |  |  | 2.5d | start no earlier than 2017-07-08 09:00 | SSG_Ing V&V; KMJHR_Asegurador de la calidad; KMJHR_Control de la configuración |  |  |
| 181 | 2.10.8.10 | Revisiones 10 | milestone | 0d | 2017-08-16 12:00 | 2017-08-16 12:00 |  |  |  | 2.5d | start no earlier than 2017-07-15 09:00 | SSG_Ing V&V; KMJHR_Asegurador de la calidad; KMJHR_Control de la configuración |  |  |
| 182 | 2.10.8.11 | Revisiones 11 | milestone | 0d | 2017-08-16 12:00 | 2017-08-16 12:00 |  |  |  | 2.5d | start no earlier than 2017-07-22 09:00 | SSG_Ing V&V; KMJHR_Asegurador de la calidad; KMJHR_Control de la configuración |  |  |
| 183 | 2.10.8.12 | Revisiones 12 | milestone | 0d | 2017-08-16 12:00 | 2017-08-16 12:00 |  |  |  | 2.5d | start no earlier than 2017-07-29 09:00 | SSG_Ing V&V; KMJHR_Asegurador de la calidad; KMJHR_Control de la configuración |  |  |
| 184 | 2.10.8.13 | Revisiones 13 | milestone | 0d | 2017-08-16 12:00 | 2017-08-16 12:00 |  |  |  | 2.5d | start no earlier than 2017-08-05 09:00 | SSG_Ing V&V; KMJHR_Asegurador de la calidad; KMJHR_Control de la configuración |  |  |
